# beehAIve Project - Complete

Schedule from MS Project, 2023-10-16 to 2024-03-22, status date 2024-01-24, costs in €, A marks actual dates.

## Calendars

- Calendario beehAIve: Mon-Sat 09:00-13:00, 14:00-18:00; Sun off. Exceptions (off unless hours are given): 2023-10-31 to 2023-11-07 (Pisa Orientamento), 2023-12-25 to 2023-12-26 (Natale e Santo Stefano), 2024-01-01 (Capodanno).

## Resources

| Resource | Group | Rate |
| --- | --- | --- |
| Andrea De Pasquale | Back-end Developers | 22 |
| Sara Valente | Back-end Developers | 22 |
| Francesco Festa | Data scientist | 19 |
| Nicolò Gallotta | Data scientist | 19 |
| Carmine Boninfante | Front-end Developers | 17 |
| Lorenzo Milione | Front-end Developers | 17 |
| Nicolò Delogu | Project Manager | 22 |
| Dario Mazza | Cyber Security Expert | 21 |

## Schedule

| ID | Task | Duration | Start | Finish | Predecessors | Complete | Remaining | Baseline start | Baseline finish | Baseline duration | Total slack | Constraint | Resources | Work | Actual work | Cost | Baseline cost | Actual cost |
| --- | --- | --- | --- | --- | --- | --- | --- | --- | --- | --- | --- | --- | --- | --- | --- | --- | --- | --- |
| 1 | **beehAIve** | 127d | 2023-10-16 A | 2024-03-22 |  | 71% | 37.3d | 2023-10-16 | 2024-03-22 | 127d | 0d |  |  | 2631.4h | 391.4h | 51,589.88 | 51,979.51 | 7,749.88 |
| 2 | **WebApp** | 76d | 2023-10-16 A | 2024-01-24 A |  | 100% |  | 2023-10-16 | 2024-01-24 | 76d |  |  |  | 391.4h | 391.4h | 7,749.88 | 8,139.51 | 7,749.88 |
| 3 | **RAD** | 12d | 2023-11-13 A | 2023-11-25 A |  | 100% |  | 2023-11-13 | 2023-11-25 | 12d |  |  |  | 46.75h | 46.75h | 900.5 | 882.58 | 900.5 |
| 4 | Introduction | 6d | 2023-11-13 A | 2023-11-18 A |  | 100% |  | 2023-11-13 | 2023-11-18 | 6d |  | start no earlier than 2023-11-13 | Francesco Festa [3.1%] | 2h | 2h | 38 | 28.5 | 38 |
| 5 | **System Model** | 2d | 2023-11-14 A | 2023-11-15 A |  | 100% |  | 2023-11-14 | 2023-11-15 | 2d |  |  |  | 6h | 6h | 116 | 96.67 | 116 |
| 6 | Scenarios | 1d | 2023-11-14 A | 2023-11-14 A | 9 | 100% |  | 2023-11-14 | 2023-11-14 | 1d |  |  | Andrea De Pasquale [6.2%]; Carmine Boninfante [6.2%]; Francesco Festa [6.2%]; Lorenzo Milione [6.2%]; Nicolò Gallotta [6.2%]; Sara Valente [6.2%] | 3h | 3h | 58 | 58 | 58 |
| 7 | Use Cases | 1d | 2023-11-15 A | 2023-11-15 A | 6 | 100% |  | 2023-11-15 | 2023-11-15 | 1d |  |  | Andrea De Pasquale [4.2%]; Carmine Boninfante [4.2%]; Francesco Festa [4.2%]; Lorenzo Milione [4.2%]; Nicolò Gallotta [4.2%]; Sara Valente [4.2%] | 3h | 3h | 58 | 38.67 | 58 |
| 8 | Current System | 6d | 2023-11-13 A | 2023-11-18 A |  | 100% |  | 2023-11-13 | 2023-11-18 | 6d |  | start no earlier than 2023-11-13 | Nicolò Gallotta [3.1%] | 2h | 2h | 38 | 28.5 | 38 |
| 9 | Proposed System's Overview | 1d | 2023-11-13 A | 2023-11-13 A |  | 100% |  | 2023-11-13 | 2023-11-13 | 1d |  | start no earlier than 2023-11-13 | Lorenzo Milione [18.8%] | 1h | 1h | 17 | 25.5 | 17 |
| 10 | Identify Functional Requirements | 1d | 2023-11-16 A | 2023-11-16 A | 5 | 100% |  | 2023-11-16 | 2023-11-16 | 1d |  |  | Andrea De Pasquale [7.3%]; Carmine Boninfante [7.3%]; Francesco Festa [7.3%]; Lorenzo Milione [7.3%]; Nicolò Gallotta [7.3%]; Sara Valente [7.3%] | 3.5h | 3.5h | 67.67 | 67.67 | 67.67 |
| 11 | Write Functional Requirements | 1d | 2023-11-17 A | 2023-11-17 A | 10 | 100% |  | 2023-11-17 | 2023-11-17 | 1d |  |  | Carmine Boninfante [6.2%]; Lorenzo Milione [6.2%] | 0.92h | 0.92h | 15.58 | 17 | 15.58 |
| 12 | Identify Non Functional Requirements | 1d | 2023-11-16 A | 2023-11-16 A | 5 | 100% |  | 2023-11-16 | 2023-11-16 | 1d |  |  | Andrea De Pasquale [5.2%]; Carmine Boninfante [5.2%]; Francesco Festa [5.2%]; Lorenzo Milione [5.2%]; Nicolò Gallotta [5.2%]; Sara Valente [5.2%] | 2.5h | 2.5h | 48.33 | 48.33 | 48.33 |
| 13 | Write Non Functional Requirements | 1d | 2023-11-17 A | 2023-11-17 A | 12 | 100% |  | 2023-11-17 | 2023-11-17 | 1d |  |  | Carmine Boninfante [6.2%]; Lorenzo Milione [6.2%] | 1.08h | 1.08h | 18.42 | 17 | 18.42 |
| 14 | Identify Actors | 1d | 2023-11-16 A | 2023-11-16 A | 5 | 100% |  | 2023-11-16 | 2023-11-16 | 1d |  |  | Andrea De Pasquale [12.5%] | 0.25h | 0.25h | 5.5 | 22 | 5.5 |
| 15 | User Stories | 1d | 2023-11-18 A | 2023-11-18 A | 11, 13 | 100% |  | 2023-11-18 | 2023-11-18 | 1d |  |  | Andrea De Pasquale [6.2%]; Carmine Boninfante [6.2%] | 1h | 1h | 19.5 | 19.5 | 19.5 |
| 16 | Use Case Diagram | 2d | 2023-11-17 A | 2023-11-18 A | 14 | 100% |  | 2023-11-17 | 2023-11-18 | 2d |  |  | Sara Valente [9.4%] | 1h | 1h | 22 | 33 | 22 |
| 17 | **Object Model** | 2d | 2023-11-20 A | 2023-11-21 A | 11FS+1d, 13 | 100% |  | 2023-11-20 | 2023-11-21 | 2d |  |  |  | 6h | 6h | 123 | 92.25 | 123 |
| 18 | Class Diagram | 2d | 2023-11-20 A | 2023-11-21 A |  | 100% |  | 2023-11-20 | 2023-11-21 | 2d |  |  | Francesco Festa [4.7%]; Sara Valente [4.7%] | 2h | 2h | 41 | 30.75 | 41 |
| 19 | Object Table | 2d | 2023-11-20 A | 2023-11-21 A |  | 100% |  | 2023-11-20 | 2023-11-21 | 2d |  |  | Francesco Festa [9.4%]; Sara Valente [9.4%] | 4h | 4h | 82 | 61.5 | 82 |
| 20 | **Dynamic Model** | 4d | 2023-11-22 A | 2023-11-25 A | 17 | 100% |  | 2023-11-22 | 2023-11-25 | 4d |  |  |  | 8h | 8h | 155 | 189.5 | 155 |
| 21 | Statechart Diagrams | 4d | 2023-11-22 A | 2023-11-25 A |  | 100% |  | 2023-11-22 | 2023-11-25 | 4d |  |  | Lorenzo Milione [5.5%]; Nicolò Gallotta [5.5%] | 1h | 1h | 18 | 63 | 18 |
| 22 | **Sequence Diagrams** | 4d | 2023-11-22 A | 2023-11-25 A |  | 100% |  | 2023-11-22 | 2023-11-25 | 4d |  |  |  | 7h | 7h | 137 | 126.5 | 137 |
| 23 | Sequence Diagram UC_CA | 4d | 2023-11-22 A | 2023-11-25 A |  | 100% |  | 2023-11-22 | 2023-11-25 | 4d |  |  | Lorenzo Milione [2.3%]; Nicolò Gallotta [2.3%] | 1h | 1h | 18 | 27 | 18 |
| 24 | Sequence Diagram UC_NA | 4d | 2023-11-22 A | 2023-11-25 A |  | 100% |  | 2023-11-22 | 2023-11-25 | 4d |  |  | Andrea De Pasquale [4.7%]; Carmine Boninfante [4.7%] | 4h | 4h | 78 | 58.5 | 78 |
| 25 | Sequence Diagram UC_PI | 4d | 2023-11-22 A | 2023-11-25 A |  | 100% |  | 2023-11-22 | 2023-11-25 | 4d |  |  | Francesco Festa [3.1%]; Sara Valente [3.1%] | 2h | 2h | 41 | 41 | 41 |

| ID | Task | Duration | Start | Finish | Predecessors | Complete | Baseline start | Baseline finish | Baseline duration | Constraint | Resources | Work | Actual work | Cost | Baseline cost | Actual cost |
| --- | --- | --- | --- | --- | --- | --- | --- | --- | --- | --- | --- | --- | --- | --- | --- | --- |
| 26 | **User Interface** | 1d | 2023-11-22 A | 2023-11-22 A | 17 | 100% | 2023-11-22 | 2023-11-22 | 1d |  |  | 4.5h | 4.5h | 81 | 81 | 81 |
| 27 | Mock-ups | 1d | 2023-11-22 A | 2023-11-22 A |  | 100% | 2023-11-22 | 2023-11-22 | 1d |  | Lorenzo Milione [21.9%]; Nicolò Gallotta [21.9%] | 4h | 4h | 72 | 63 | 72 |
| 28 | Navigational Path | 1d | 2023-11-22 A | 2023-11-22 A |  | 100% | 2023-11-22 | 2023-11-22 | 1d |  | Lorenzo Milione [6.2%]; Nicolò Gallotta [6.2%] | 0.5h | 0.5h | 9 | 18 | 9 |
| 29 | RAD Integration | 1d | 2023-11-23 A | 2023-11-23 A | 28 | 100% | 2023-11-23 | 2023-11-23 | 1d |  | Andrea De Pasquale [10.4%]; Carmine Boninfante [10.4%]; Francesco Festa [10.4%]; Lorenzo Milione [10.4%]; Nicolò Gallotta [10.4%]; Sara Valente [10.4%] | 6h | 6h | 116 | 96.67 | 116 |
| 30 | Glossary | 1d | 2023-11-23 A | 2023-11-23 A | 28 | 100% | 2023-11-23 | 2023-11-23 | 1d |  | Andrea De Pasquale [6.2%]; Carmine Boninfante [6.2%] | 1h | 1h | 19.5 | 19.5 | 19.5 |
| 31 | **SDD** | 7d | 2023-11-27 A | 2023-12-04 A | 3 | 100% | 2023-11-27 | 2023-12-04 | 7d |  |  | 26.17h | 26.17h | 516.99 | 500.33 | 516.99 |
| 32 | Introduction | 1d | 2023-11-27 A | 2023-11-27 A |  | 100% | 2023-11-27 | 2023-11-27 | 1d | start no earlier than 2023-11-27 | Nicolò Gallotta [25%] | 2h | 2h | 38 | 38 | 38 |
| 33 | Current Software Architecture | 1d | 2023-11-28 A | 2023-11-28 A | 32 | 100% | 2023-11-28 | 2023-11-28 | 1d | start no earlier than 2023-11-28 | Carmine Boninfante [6.2%] | 0.5h | 0.5h | 8.5 | 8.5 | 8.5 |
| 34 | **Proposed Software Architecture** | 2d | 2023-11-29 A | 2023-11-30 A | 33 | 100% | 2023-11-29 | 2023-11-30 | 2d |  |  | 8.33h | 8.33h | 166.83 | 114.5 | 166.83 |
| 35 | Overview | 1d | 2023-11-29 A | 2023-11-29 A |  | 100% | 2023-11-29 | 2023-11-29 | 1d | start no earlier than 2023-11-29 | Nicolò Gallotta [12.5%] | 0.33h | 0.33h | 6.33 | 19 | 6.33 |
| 36 | Subsytems Decomposition | 1d | 2023-11-29 A | 2023-11-29 A |  | 100% | 2023-11-29 | 2023-11-29 | 1d | start no earlier than 2023-11-29 | Andrea De Pasquale [18.8%]; Francesco Festa [18.8%] | 7h | 7h | 143.5 | 61.5 | 143.5 |
| 37 | HW/SW Mapping and Deployment Diagram | 1d | 2023-11-30 A | 2023-11-30 A | 36 | 100% | 2023-11-30 | 2023-11-30 | 1d |  | Carmine Boninfante [25%] | 1h | 1h | 17 | 34 | 17 |
| 38 | **Persistent Data Management** | 4d | 2023-11-27 A | 2023-11-30 A |  | 100% | 2023-11-27 | 2023-11-30 | 4d |  |  | 3h | 3h | 66 | 88 | 66 |
| 39 | ER Schema | 2d | 2023-11-27 A | 2023-11-28 A |  | 100% | 2023-11-27 | 2023-11-28 | 2d | start no earlier than 2023-11-27 | Sara Valente [12.5%] | 1.25h | 1.25h | 27.5 | 44 | 27.5 |
| 40 | Logical Schema | 1d | 2023-11-29 A | 2023-11-29 A | 39 | 100% | 2023-11-29 | 2023-11-29 | 1d |  | Sara Valente [12.5%] | 1h | 1h | 22 | 22 | 22 |
| 41 | Data Dictionary | 1d | 2023-11-30 A | 2023-11-30 A | 40 | 100% | 2023-11-30 | 2023-11-30 | 1d |  | Sara Valente [12.5%] | 0.75h | 0.75h | 16.5 | 22 | 16.5 |
| 42 | Access Control & Global Control Flow | 1d | 2023-12-02 A | 2023-12-02 A | 44 | 100% | 2023-12-02 | 2023-12-02 | 1d |  | Lorenzo Milione [12.5%] | 1h | 1h | 17 | 17 | 17 |
| 43 | Boundary Conditions | 1d | 2023-12-02 A | 2023-12-02 A |  | 100% | 2023-12-02 | 2023-12-02 | 1d | start no earlier than 2023-12-02 | Lorenzo Milione [18.8%] | 1h | 1h | 17 | 25.5 | 17 |
| 44 | **Subsystems Services** | 1d | 2023-12-01 A | 2023-12-01 A | 34 | 100% | 2023-12-01 | 2023-12-01 | 1d |  |  | 4h | 4h | 81.99 | 123 | 81.99 |
| 45 | GestioneUtente | 1d | 2023-12-01 A | 2023-12-01 A |  | 100% | 2023-12-01 | 2023-12-01 | 1d | start no earlier than 2023-12-01 | Andrea De Pasquale [9.4%]; Francesco Festa [9.4%] | 1.33h | 1.33h | 27.33 | 30.75 | 27.33 |
| 46 | GestioneArnia | 1d | 2023-12-01 A | 2023-12-01 A |  | 100% | 2023-12-01 | 2023-12-01 | 1d | start no earlier than 2023-12-01 | Andrea De Pasquale [9.4%]; Francesco Festa [9.4%] | 1.33h | 1.33h | 27.33 | 30.75 | 27.33 |
| 47 | GestioneSensori | 1d | 2023-12-01 A | 2023-12-01 A |  | 100% | 2023-12-01 | 2023-12-01 | 1d | start no earlier than 2023-12-01 | Andrea De Pasquale [9.4%]; Francesco Festa [9.4%] | 0.67h | 0.67h | 13.66 | 30.75 | 13.66 |
| 48 | PrevisioneAnomalie | 1d | 2023-12-01 A | 2023-12-01 A |  | 100% | 2023-12-01 | 2023-12-01 | 1d | start no earlier than 2023-12-01 | Andrea De Pasquale [9.4%]; Francesco Festa [9.4%] | 0.67h | 0.67h | 13.66 | 30.75 | 13.66 |
| 49 | Glossary | 1d | 2023-12-02 A | 2023-12-02 A | 44 | 100% | 2023-12-02 | 2023-12-02 | 1d | start no earlier than 2023-12-02 | Lorenzo Milione [6.2%] | 0.33h | 0.33h | 5.67 | 8.5 | 5.67 |
| 50 | SDD Revision | 1d | 2023-12-04 A | 2023-12-04 A | 49 | 100% | 2023-12-04 | 2023-12-04 | 1d |  | Andrea De Pasquale [8.3%]; Carmine Boninfante [8.3%]; Francesco Festa [8.3%]; Lorenzo Milione [8.3%]; Nicolò Gallotta [8.3%]; Sara Valente [8.3%] | 6h | 6h | 116 | 77.33 | 116 |

| ID | Task | Type | Duration | Start | Finish | Predecessors | Complete | Baseline start | Baseline finish | Baseline duration | Constraint | Resources | Work | Actual work | Cost | Baseline cost | Actual cost |
| --- | --- | --- | --- | --- | --- | --- | --- | --- | --- | --- | --- | --- | --- | --- | --- | --- | --- |
| 51 | **ODD** |  | 7d | 2023-12-18 A | 2023-12-27 A | 64 | 100% | 2023-12-18 | 2023-12-27 | 7d |  |  | 24.5h | 24.5h | 472.08 | 416.17 | 472.08 |
| 52 | Introduction |  | 1d | 2023-12-18 A | 2023-12-18 A |  | 100% | 2023-12-18 | 2023-12-18 | 1d | start no earlier than 2023-12-18 | Lorenzo Milione [25%] | 1.25h | 1.25h | 21.25 | 34 | 21.25 |
| 53 | Packages |  | 1d | 2023-12-19 A | 2023-12-19 A | 52 | 100% | 2023-12-19 | 2023-12-19 | 1d | start no earlier than 2023-12-19 | Carmine Boninfante [25%]; Francesco Festa [25%] | 2h | 2h | 36 | 72 | 36 |
| 54 | Class Interfaces |  | 1d | 2023-12-20 A | 2023-12-20 A | 53 | 100% | 2023-12-20 | 2023-12-20 | 1d | start no earlier than 2023-12-20 | Andrea De Pasquale [15.6%]; Francesco Festa [15.6%]; Nicolò Gallotta [15.6%]; Sara Valente [15.6%] | 9h | 9h | 184.5 | 102.5 | 184.5 |
| 55 | Class Diagram |  | 1d | 2023-12-21 A | 2023-12-21 A | 54 | 100% | 2023-12-21 | 2023-12-21 | 1d | start no earlier than 2023-12-21 | Francesco Festa [12%]; Sara Valente [12%]; Lorenzo Milione [38.5%] | 6h | 6h | 110.08 | 102.5 | 110.08 |
| 56 | Design Patterns |  | 2d | 2023-12-22 A | 2023-12-23 A | 55 | 100% | 2023-12-22 | 2023-12-23 | 2d | start no earlier than 2023-12-22 | Andrea De Pasquale [5.2%]; Carmine Boninfante [5.2%]; Francesco Festa [5.2%]; Lorenzo Milione [5.2%]; Nicolò Gallotta [5.2%]; Sara Valente [5.2%] | 6h | 6h | 116 | 96.67 | 116 |
| 57 | Glossary |  | 1d | 2023-12-27 A | 2023-12-27 A | 56 | 100% | 2023-12-27 | 2023-12-27 | 1d | start no earlier than 2023-12-23 | Lorenzo Milione [6.2%] | 0.25h | 0.25h | 4.25 | 8.5 | 4.25 |
| 58 | Test Plan |  | 2d | 2023-12-05 A | 2023-12-06 A | 31 | 100% | 2023-12-05 | 2023-12-06 | 2d | finish no earlier than 2023-12-06 | Andrea De Pasquale [8%]; Carmine Boninfante [8%]; Francesco Festa [8%]; Lorenzo Milione [8%]; Nicolò Delogu [8%]; Nicolò Gallotta [8%]; Sara Valente [8%] | 9h | 9h | 177.43 | 177.43 | 177.43 |
| 59 | Test Case Specification |  | 2d | 2023-12-07 A | 2023-12-08 A | 58 | 100% | 2023-12-07 | 2023-12-08 | 2d |  | Andrea De Pasquale [9.4%]; Carmine Boninfante [9.4%]; Francesco Festa [9.4%]; Lorenzo Milione [9.4%]; Nicolò Gallotta [9.4%]; Sara Valente [9.4%] | 3h | 3h | 58 | 174 | 58 |
| 60 | **Testing Documentation** |  | 1d | 2024-01-20 A | 2024-01-20 A | 68 | 100% | 2024-01-20 | 2024-01-20 | 1d |  |  | 9h | 9h | 174 | 522 | 174 |
| 61 | Test Incident Report |  | 1d | 2024-01-20 A | 2024-01-20 A |  | 100% | 2024-01-20 | 2024-01-20 | 1d | start no earlier than 2024-01-18 | Andrea De Pasquale [18.8%]; Carmine Boninfante [18.8%]; Francesco Festa [18.8%]; Lorenzo Milione [18.8%]; Nicolò Gallotta [18.8%]; Sara Valente [18.8%] | 3h | 3h | 58 | 174 | 58 |
| 62 | Test Summary Report |  | 1d | 2024-01-20 A | 2024-01-20 A |  | 100% | 2024-01-20 | 2024-01-20 | 1d |  | Andrea De Pasquale [18.8%]; Carmine Boninfante [18.8%]; Francesco Festa [18.8%]; Lorenzo Milione [18.8%]; Nicolò Gallotta [18.8%]; Sara Valente [18.8%] | 3h | 3h | 58 | 174 | 58 |
| 63 | Test Incident Report Table |  | 1d | 2024-01-20 A | 2024-01-20 A |  | 100% | 2024-01-20 | 2024-01-20 | 1d |  | Andrea De Pasquale [18.8%]; Carmine Boninfante [18.8%]; Francesco Festa [18.8%]; Lorenzo Milione [18.8%]; Nicolò Gallotta [18.8%]; Sara Valente [18.8%] | 3h | 3h | 58 | 174 | 58 |
| 64 | Midterm Delivery | milestone, manual | 1d | 2023-12-13 A | 2023-12-13 A | 59FS+3d | 100% | 2023-12-13 | 2023-12-13 | 1d |  |  |  |  |  |  |  |
| 65 | **Development** |  | 13d | 2023-12-28 A | 2024-01-12 A | 51 | 100% | 2023-12-28 | 2024-01-12 | 13d |  |  | 127.25h | 127.25h | 2,521.12 | 2,115 | 2,521.12 |
| 66 | Back-end |  | 13d | 2023-12-28 A | 2024-01-12 A |  | 100% | 2023-12-28 | 2024-01-12 | 13d |  | Andrea De Pasquale [16.8%]; Francesco Festa [16.8%]; Nicolò Gallotta [16.8%]; Sara Valente [16.8%] | 102.25h | 102.25h | 2,096.12 | 1,435 | 2,096.12 |
| 67 | Front-end |  | 13d | 2023-12-28 A | 2024-01-12 A |  | 100% | 2023-12-28 | 2024-01-12 | 13d |  | Carmine Boninfante [19.2%]; Lorenzo Milione [19.2%] | 25h | 25h | 425 | 680 | 425 |
| 68 | **Testing** |  | 6d | 2024-01-13 A | 2024-01-19 A | 65 | 100% | 2024-01-13 | 2024-01-19 | 6d |  |  | 18h | 18h | 352 | 928 | 352 |
| 69 | Unit Testing |  | 4d | 2024-01-13 A | 2024-01-17 A |  | 100% | 2024-01-13 | 2024-01-17 | 4d | start no earlier than 2024-01-13 | Carmine Boninfante [25%]; Lorenzo Milione [25%]; Sara Valente [25%] | 6h | 6h | 112 | 448 | 112 |
| 70 | System Testing |  | 2d | 2024-01-18 A | 2024-01-19 A | 69 | 100% | 2024-01-18 | 2024-01-19 | 2d |  | Andrea De Pasquale [50%]; Francesco Festa [50%]; Nicolò Gallotta [50%] | 12h | 12h | 240 | 480 | 240 |
| 71 | **Manuals** |  | 1d | 2024-01-20 A | 2024-01-20 A | 68 | 100% | 2024-01-20 | 2024-01-20 | 1d |  |  | 4h | 4h | 78 | 78 | 78 |
| 72 | User Manual |  | 1d | 2024-01-20 A | 2024-01-20 A |  | 100% | 2024-01-20 | 2024-01-20 | 1d | start no earlier than 2024-01-18 | Carmine Boninfante [12.5%]; Sara Valente [12.5%] | 2h | 2h | 39 | 39 | 39 |
| 73 | Installation Manual |  | 1d | 2024-01-20 A | 2024-01-20 A |  | 100% | 2024-01-20 | 2024-01-20 | 1d | start no earlier than 2024-01-18 | Andrea De Pasquale [12.5%]; Lorenzo Milione [12.5%] | 2h | 2h | 39 | 39 | 39 |
| 74 | First Release | milestone, manual | 0d | 2024-01-24 A | 2024-01-24 A | 90 | 100% | 2024-01-24 | 2024-01-24 | 0d |  |  |  |  |  |  |  |

| ID | Task | Type | Duration | Start | Finish | Predecessors | Complete | Baseline start | Baseline finish | Baseline duration | Total slack | Constraint | Resources | Work | Actual work | Cost | Baseline cost | Actual cost |
| --- | --- | --- | --- | --- | --- | --- | --- | --- | --- | --- | --- | --- | --- | --- | --- | --- | --- | --- |
| 75 | **Weekly Meeting** |  | 47.12d | 2023-10-16 A | 2023-12-18 A |  | 100% | 2023-10-16 | 2023-12-18 | 47.12d |  |  |  | 87.74h | 87.74h | 1,743.77 | 1,590 | 1,743.77 |
| 76 | Weekly Meeting 1 |  | 1h | 2023-10-16 A | 2023-10-16 A |  | 100% | 2023-10-16 | 2023-10-16 | 1h |  | start no earlier than 2023-10-16 | Andrea De Pasquale; Carmine Boninfante; Dario Mazza; Francesco Festa; Lorenzo Milione; Nicolò Delogu; Nicolò Gallotta; Sara Valente | 7.07h | 7.07h | 140.45 | 159 | 140.45 |
| 77 | Weekly Meeting 2 |  | 1h | 2023-10-16 A | 2023-10-16 A |  | 100% | 2023-10-16 | 2023-10-16 | 1h |  | start no earlier than 2023-10-16 | Andrea De Pasquale; Carmine Boninfante; Dario Mazza; Francesco Festa; Lorenzo Milione; Nicolò Delogu; Nicolò Gallotta; Sara Valente | 6h | 6h | 119.25 | 159 | 119.25 |
| 78 | Weekly Meeting 3 |  | 1h | 2023-10-23 A | 2023-10-23 A |  | 100% | 2023-10-23 | 2023-10-23 | 1h |  | start no earlier than 2023-10-23 | Dario Mazza; Francesco Festa; Lorenzo Milione; Nicolò Delogu; Nicolò Gallotta; Sara Valente; Andrea De Pasquale; Carmine Boninfante | 10.67h | 10.67h | 212.07 | 159 | 212.07 |
| 79 | Weekly Meeting 4 |  | 1h | 2023-10-30 A | 2023-10-30 A |  | 100% | 2023-10-30 | 2023-10-30 | 1h |  | start no earlier than 2023-10-30 | Dario Mazza; Francesco Festa; Lorenzo Milione; Nicolò Delogu; Nicolò Gallotta; Sara Valente; Andrea De Pasquale; Carmine Boninfante | 8h | 8h | 159 | 159 | 159 |
| 80 | Weekly Meeting 5 |  | 1h | 2023-11-13 A | 2023-11-13 A |  | 100% | 2023-11-13 | 2023-11-13 | 1h |  | start no earlier than 2023-11-13 | Dario Mazza; Francesco Festa; Lorenzo Milione; Nicolò Delogu; Nicolò Gallotta; Sara Valente; Andrea De Pasquale; Carmine Boninfante | 8h | 8h | 159 | 159 | 159 |
| 81 | Weekly Meeting 6 |  | 1h | 2023-11-20 A | 2023-11-20 A |  | 100% | 2023-11-20 | 2023-11-20 | 1h |  | start no earlier than 2023-11-20 | Dario Mazza; Francesco Festa; Lorenzo Milione; Nicolò Delogu; Nicolò Gallotta; Sara Valente; Andrea De Pasquale; Carmine Boninfante | 8h | 8h | 159 | 159 | 159 |
| 82 | Weekly Meeting 7 |  | 1h | 2023-11-27 A | 2023-11-27 A |  | 100% | 2023-11-27 | 2023-11-27 | 1h |  | start no earlier than 2023-11-27 | Dario Mazza; Francesco Festa; Lorenzo Milione; Nicolò Delogu; Nicolò Gallotta; Sara Valente; Andrea De Pasquale; Carmine Boninfante | 8h | 8h | 159 | 159 | 159 |
| 83 | Weekly Meeting 8 |  | 1h | 2023-12-04 A | 2023-12-04 A |  | 100% | 2023-12-04 | 2023-12-04 | 1h |  | start no earlier than 2023-12-04 | Dario Mazza; Francesco Festa; Lorenzo Milione; Nicolò Delogu; Nicolò Gallotta; Sara Valente; Andrea De Pasquale; Carmine Boninfante | 8h | 8h | 159 | 159 | 159 |
| 84 | Weekly Meeting 9 |  | 1h | 2023-12-11 A | 2023-12-11 A |  | 100% | 2023-12-11 | 2023-12-11 | 1h |  | start no earlier than 2023-12-11 | Dario Mazza; Francesco Festa; Lorenzo Milione; Nicolò Delogu; Nicolò Gallotta; Sara Valente; Andrea De Pasquale; Carmine Boninfante | 12h | 12h | 238.5 | 159 | 238.5 |
| 85 | Weekly Meeting 10 |  | 1h | 2023-12-18 A | 2023-12-18 A |  | 100% | 2023-12-18 | 2023-12-18 | 1h |  | start no earlier than 2023-12-18 | Dario Mazza; Francesco Festa; Lorenzo Milione; Nicolò Delogu; Nicolò Gallotta; Sara Valente; Andrea De Pasquale; Carmine Boninfante | 12h | 12h | 238.5 | 159 | 238.5 |
| 86 | Security Review - RAD |  | 1d | 2023-11-27 A | 2023-11-27 A | 3 | 100% | 2023-11-27 | 2023-11-27 | 1d |  | start no earlier than 2023-11-27 | Dario Mazza [50%] | 4h | 4h | 84 | 84 | 84 |
| 87 | Security Review - SDD |  | 1d | 2023-12-05 A | 2023-12-05 A | 31 | 100% | 2023-12-05 | 2023-12-05 | 1d |  | start no earlier than 2023-12-05 | Dario Mazza [50%] | 4h | 4h | 84 | 84 | 84 |
| 88 | Security Review - ODD |  | 1d | 2023-12-28 A | 2023-12-28 A | 51 | 100% | 2023-12-28 | 2023-12-28 | 1d |  | start no earlier than 2023-12-28 | Dario Mazza [50%] | 4h | 4h | 84 | 84 | 84 |
| 89 | Security Check - Post-Testing |  | 1d | 2024-01-20 A | 2024-01-20 A | 68 | 100% | 2024-01-20 | 2024-01-20 | 1d |  |  | Dario Mazza | 8h | 8h | 168 | 168 | 168 |
| 90 | Security Audit - Pre-Release |  | 2d | 2024-01-22 A | 2024-01-23 A | 60 | 100% | 2024-01-22 | 2024-01-23 | 2d |  | start no earlier than 2024-01-22 | Dario Mazza | 16h | 16h | 336 | 336 | 336 |
| 91 | **Mobile App** |  | 50d | 2024-01-25 | 2024-03-22 | 74 |  | 2024-01-25 | 2024-03-22 | 50d | 0d |  |  | 2240h |  | 43,840 | 43,840 |  |
| 92 | Planning & Design |  | 10d | 2024-01-25 | 2024-02-05 |  |  | 2024-01-25 | 2024-02-05 | 10d | 0d | start no earlier than 2024-01-25 | Andrea De Pasquale [80%]; Carmine Boninfante [80%]; Dario Mazza [80%]; Francesco Festa [80%]; Lorenzo Milione [80%]; Nicolò Gallotta [80%]; Sara Valente [80%] | 448h |  | 8,768 | 8,768 |  |
| 93 | Prototype Development |  | 15d | 2024-02-06 | 2024-02-22 | 92 |  | 2024-02-06 | 2024-02-22 | 15d | 0d |  | Andrea De Pasquale [80%]; Carmine Boninfante [80%]; Dario Mazza [80%]; Francesco Festa [80%]; Lorenzo Milione [80%]; Nicolò Gallotta [80%]; Sara Valente [80%] | 672h |  | 13,152 | 13,152 |  |
| 94 | Testing & Feedback |  | 15d | 2024-02-23 | 2024-03-11 | 93 |  | 2024-02-23 | 2024-03-11 | 15d | 0d |  | Andrea De Pasquale [80%]; Carmine Boninfante [80%]; Dario Mazza [80%]; Francesco Festa [80%]; Lorenzo Milione [80%]; Nicolò Gallotta [80%]; Sara Valente [80%] | 672h |  | 13,152 | 13,152 |  |
| 95 | Development Iterations |  | 10d | 2024-03-12 | 2024-03-22 | 94 |  | 2024-03-12 | 2024-03-22 | 10d | 0d |  | Andrea De Pasquale [80%]; Carmine Boninfante [80%]; Dario Mazza [80%]; Francesco Festa [80%]; Lorenzo Milione [80%]; Nicolò Gallotta [80%]; Sara Valente [80%] | 448h |  | 8,768 | 8,768 |  |
| 96 | Mobile App Release | milestone | 0d | 2024-03-22 | 2024-03-22 | 95 |  | 2024-03-22 | 2024-03-22 | 0d | 0d |  |  |  |  |  |  |  |
